# gantt

Schedule from MS Project, 2017-01-26 to 2017-04-11, 24 hours a day.

## Calendars

- 24 Hours: Mon-Sun 00:00-24:00.

## Schedule

| ID | WBS | Task | Type | Duration | Start | Finish | Predecessors | Total slack | Free slack |
| --- | --- | --- | --- | --- | --- | --- | --- | --- | --- |
| 1 | 1 | Introduction | milestone | 0d | 2017-01-26 | 2017-01-26 |  | 75d |  |
| 2 | 2 | **Spring** |  | 75d | 2017-01-26 | 2017-04-11 |  | 0d |  |
| 3 | 2.1 | **Data** |  | 17d | 2017-01-26 | 2017-02-12 |  | 0d |  |
| 4 | 2.1.1 | Acquisition |  | 14d | 2017-01-26 | 2017-02-09 |  | 0d |  |
| 5 | 2.1.2 | Processing |  | 3d | 2017-02-09 | 2017-02-12 | 4 | 0d |  |
| 6 | 2.2 | **Research** |  | 26d | 2017-01-26 | 2017-02-21 |  | 0d |  |
| 7 | 2.2.1 | **OpenDSS** |  | 12d | 2017-01-26 | 2017-02-07 |  | 0d |  |
| 8 | 2.2.1.1 | Primer |  | 5d | 2017-01-26 | 2017-01-31 |  | 0d |  |
| 9 | 2.2.1.2 | Storage |  | 7d | 2017-01-31 | 2017-02-07 | 8 | 0d |  |
| 10 | 2.2.2 | **BES Management Schemes** |  | 7d | 2017-01-31 | 2017-02-07 | 8 | 0d |  |
| 11 | 2.2.2.1 | PV Firming |  | 7d | 2017-01-31 | 2017-02-07 |  | 0d |  |
| 12 | 2.2.2.2 | Energy Time Shift |  | 7d | 2017-01-31 | 2017-02-07 |  | 0d |  |
| 13 | 2.2.2.3 | Peak Demand Reduction |  | 7d | 2017-01-31 | 2017-02-07 |  | 0d |  |
| 14 | 2.2.3 | **Batteries** |  | 14d | 2017-02-07 | 2017-02-21 | 10, 7 | 0d |  |
| 15 | 2.2.3.1 | BES Technology |  | 14d | 2017-02-07 | 2017-02-21 |  | 0d |  |
| 16 | 2.2.3.2 | Price/Performance |  | 14d | 2017-02-07 | 2017-02-21 |  | 0d |  |
| 17 | 2.3 | **Model** |  | 35d | 2017-01-31 | 2017-03-07 |  | 12d | 0d |
| 18 | 2.3.1 | **Sample Circuit** |  | 2d | 2017-01-31 | 2017-02-02 | 8 | 61d |  |
| 19 | 2.3.1.1 | Static Powerflow |  | 1d | 2017-01-31 | 2017-02-01 |  | 61d | 0d |
| 20 | 2.3.1.2 | Quasistatic Time Series |  | 1d | 2017-02-01 | 2017-02-02 | 19 | 61d |  |
| 21 | 2.3.2 | **Actual Circuit** |  | 23d | 2017-02-12 | 2017-03-07 |  | 0d |  |
| 22 | 2.3.2.1 | SXST to DSS Conversion |  | 3d | 2017-02-12 | 2017-02-15 | 3 | 0d |  |
| 23 | 2.3.2.2 | Static Powerflow |  | 3d | 2017-02-15 | 2017-02-18 | 22 | 0d |  |
| 24 | 2.3.2.3 | Quasistatic Time Series |  | 3d | 2017-02-18 | 2017-02-21 | 23 | 0d |  |
| 25 | 2.3.2.4 | BES and PV |  | 7d | 2017-02-21 | 2017-02-28 | 24, 14 | 0d |  |
| 26 | 2.3.2.5 | BES Management Scheme |  | 7d | 2017-02-28 | 2017-03-07 | 25 | 0d |  |

Notes:
- 1: Problem Statement: / Given the load data, Cyme model and load type percentages of feeder X, design a BESS (1MW &amp; 2MWh) and a 2MW solar facility. Find the optimum location for the BESS/Solar facility within the feeder such that distribution level value from the new DER is maximized. Probable value streams may include (but not limited to) line loss reduction, regulator tap operations reduction, voltage profile improvement, equipment upgrade deferral and solar hosting capacity increase. BESS applications may include (but not limited to) PV smoothing/firming, peak load shaving, voltage support and Energy Arbitrage.
- 4: ·CYME circuit models of feeders that are consistently being backfed by solar / ·Per Phase Watt and VAR 5 minute measurements from the feeder circuit breaker for 2016 / ·Per Phase Watt and VAR 5 minute measurements from the existing DG recloser solar generation for 2016 / ·Per Phase Watt and VAR 5 minute measurements from the existing voltage regulators, source and load sides for 2016 / ·Load type percentages per circuit (commercial, residential or industrial)
- 10: ·Research the following BES Management schemes for application on the circuit: PV firming, energy time shift & peak demand reduction
- 14: ·Complete review of available distribution BES chemistries and technologies and select optimal technology for price/performances (Examples include: flow battery, lithium ion, lead acid, etc.)
- 23: ·Model given feeder in simulation software (CYME, OpenDSS or Matlab is recommended) / ·Incorporate given load profiles, validate simulation of power flow and identify the baseline existing circuit issues
- 25: ·Model selected BES and PV system in steady state software
- 26: ·Incorporate BES management scheme into circuit simulation

| ID | WBS | Task | Type | Duration | Start | Finish | Predecessors | Total slack | Free slack |
| --- | --- | --- | --- | --- | --- | --- | --- | --- | --- |
| 27 | 2.4 | **Presentation** |  | 35d | 2017-03-07 | 2017-04-11 | 17 | 0d |  |
| 28 | 2.4.1 | CAPER Powerpoint |  | 7d | 2017-03-07 | 2017-03-14 |  | 28d |  |
| 29 | 2.4.2 | 496 Poster |  | 7d | 2017-04-04 | 2017-04-11 | 31 | 0d |  |
| 30 | 2.4.3 | 496 Video |  | 7d | 2017-04-04 | 2017-04-11 | 31 | 0d |  |
| 31 | 2.5 | **Hardware** |  | 28d | 2017-03-07 | 2017-04-04 | 21 | 0d |  |
| 32 | 2.5.1 | Design |  | 7d | 2017-03-07 | 2017-03-14 |  | 0d |  |
| 33 | 2.5.2 | Component Selection/Ordering |  | 7d | 2017-03-14 | 2017-03-21 | 32 | 0d |  |
| 34 | 2.5.3 | Build |  | 7d | 2017-03-21 | 2017-03-28 | 33 | 0d |  |
| 35 | 2.5.4 | Verification |  | 7d | 2017-03-28 | 2017-04-04 | 34 | 0d |  |
| 36 | 3 | **Fall** |  | 0d | 2017-01-26 | 2017-01-26 |  | 75d |  |
| 37 | 3.1 | Data | milestone | 0d | 2017-01-26 | 2017-01-26 |  | 75d |  |
| 38 | 3.2 | Research | milestone | 0d | 2017-01-26 | 2017-01-26 |  | 75d |  |
| 39 | 3.3 | **Model** |  | 0d | 2017-01-26 | 2017-01-26 |  | 75d | 0d |
| 40 | 3.3.1 | **Fall** |  | 0d | 2017-01-26 | 2017-01-26 |  | 75d |  |
| 41 | 3.3.1.1 | Performance Metrics | milestone | 0d | 2017-01-26 | 2017-01-26 |  | 75d | 0d |
| 42 | 3.3.1.2 | Optimal Location | milestone | 0d | 2017-01-26 | 2017-01-26 | 41 | 75d | 0d |
| 43 | 3.3.1.3 | Operational Efficiency | milestone | 0d | 2017-01-26 | 2017-01-26 | 42 | 75d |  |
| 44 | 3.4 | **Presentation** |  | 0d | 2017-01-26 | 2017-01-26 | 39 | 75d |  |
| 45 | 3.4.1 | CAPER Powerpoint | milestone | 0d | 2017-01-26 | 2017-01-26 |  | 75d |  |
| 46 | 3.4.2 | 496 Poster | milestone | 0d | 2017-01-26 | 2017-01-26 |  | 75d |  |
| 47 | 3.4.3 | 496 Video | milestone | 0d | 2017-01-26 | 2017-01-26 |  | 75d |  |
| 48 | 3.5 | Hardware | milestone | 0d | 2017-01-26 | 2017-01-26 |  | 75d |  |

Notes:
- 41: ·Evaluate performance of selected BES and management scheme for given circuit and load profile with consideration given to savings due to demand shift, PV firming, increasing hosting capacity, etc.
- 42: ·Find optimal location of one or more of the BES systems to maximize value
- 43: ·Emphasize differences in operational efficiency between the distribution feeder with and without your Solar+BESS system for year seasons and 3 selected PV profiles (highly intermittent, overcast and clear)
